# Chasse immobilière — Belkacem

How a schedule from GanttProject changed from version to version. A marks actual dates.

## Version 1 (saved 2026-09-05)

Note of the change: docs: update project tracking after opportunity study

| ID | WBS | Task | Duration | Start | Finish | Predecessors | Complete |
| --- | --- | --- | --- | --- | --- | --- | --- |
| 1 | 1 | **Phase 1 — Audit de l’existant** | 2d | 2026-07-27 | 2026-07-28 |  | 100% |
| 2 |  | Analyser les consignes et l’existant | 1d | 2026-07-27 | 2026-07-27 |  | 100% |
| 3 |  | Cartographier le système d’information existant | 1d | 2026-07-27 | 2026-07-27 |  | 100% |
| 4 |  | Analyser la base de données et identifier les anomalies | 1d | 2026-07-27 | 2026-07-27 |  | 100% |
| 5 |  | Rédiger l’analyse et le registre des anomalies | 1d | 2026-07-28 | 2026-07-28 | 2, 4 | 100% |
| 6 |  | Réaliser l’analyse SWOT | 1d | 2026-07-28 | 2026-07-28 |  | 100% |
| 7 |  | Validation de la phase 1 | 0d | 2026-07-29 | 2026-07-29 | 5, 6 | 100% |
| 8 | 2 | **Phase 2 — Modèle cible et reprise des données** | 50d | 2026-07-29 | 2026-09-16 |  | 73% |
| 9 |  | Cadrer les besoins métier et les règles de gestion | 5d | 2026-07-29 | 2026-08-02 |  | 100% |
| 10 |  | Concevoir et valider le MCD cible | 6d | 2026-08-05 | 2026-08-10 | 9 | 100% |
| 11 |  | Concevoir et valider le MLD cible | 4d | 2026-08-13 | 2026-08-16 | 10 | 100% |
| 12 |  | Construire et exécuter migration-final.sql | 3d | 2026-08-19 | 2026-08-21 | 11 | 100% |
| 13 |  | Construire et exécuter reprise-donnees-final.sql | 5d | 2026-08-24 | 2026-08-28 | 12 | 100% |
| 14 |  | Produire la preuve de validation de la reprise | 2d | 2026-08-31 | 2026-09-01 | 13 | 100% |
| 15 |  | Finaliser et valider le cahier des charges technique | 3d | 2026-09-02 | 2026-09-04 | 14 | 100% |
| 16 |  | Réaliser l’étude d’opportunité | 1d | 2026-09-05 | 2026-09-05 | 15 | 100% |
| 17 |  | Prioriser le backlog fonctionnel | 2d | 2026-09-10 | 2026-09-11 | 16 |  |
| 18 |  | Formaliser BPMN et RACI | 2d | 2026-09-12 | 2026-09-13 | 17 |  |
| 19 |  | Consolider RGPD, éco-conception et traçabilité | 3d | 2026-09-14 | 2026-09-16 | 18 |  |
| 20 |  | Validation de la phase 2 | 0d | 2026-09-17 | 2026-09-17 | 19 |  |
| 21 | 3 | **Phase 3 — Architecture de croissance et décisionnel** | 23d | 2026-09-17 | 2026-10-09 |  |  |
| 22 |  | Analyser les volumes, la croissance et les contraintes 3V | 4d | 2026-09-17 | 2026-09-20 | 20 |  |
| 23 |  | Concevoir la séparation OLTP / OLAP | 5d | 2026-09-21 | 2026-09-25 | 22 |  |
| 24 |  | Étudier l’architecture PostgreSQL distribuée / Citus | 5d | 2026-09-21 | 2026-09-25 | 22 |  |
| 25 |  | Prototyper Citus avec k3d | 5d | 2026-09-26 | 2026-09-30 | 24 |  |
| 26 |  | Définir indexation, partitionnement et stratégie de performance | 4d | 2026-10-01 | 2026-10-04 | 23, 25 |  |
| 27 |  | Formaliser PCA, PRA et stratégie de migration | 5d | 2026-10-05 | 2026-10-09 | 26 |  |
| 28 |  | Concevoir le modèle décisionnel et les indicateurs | 5d | 2026-09-26 | 2026-09-30 | 23 |  |
| 29 |  | Validation de la phase 3 | 0d | 2026-10-10 | 2026-10-10 | 27, 28 |  |
| 30 | 4 | **Phase 4 — Backend, API et IA** | 27d | 2026-10-10 | 2026-11-05 |  |  |
| 31 |  | Concevoir l’architecture applicative du backend | 4d | 2026-10-10 | 2026-10-13 | 29 |  |
| 32 |  | Développer l’API et les accès aux données | 8d | 2026-10-14 | 2026-10-21 | 31 |  |
| 33 |  | Implémenter les règles métier et contrôles d’accès | 5d | 2026-10-22 | 2026-10-26 | 32 |  |
| 34 |  | Préparer le pipeline de matching et les traitements IA | 6d | 2026-10-22 | 2026-10-27 | 32 |  |
| 35 |  | Réaliser les tests fonctionnels, techniques et sécurité | 5d | 2026-10-28 | 2026-11-01 | 33, 34 |  |
| 36 |  | Documenter API, accessibilité et exploitation | 4d | 2026-11-02 | 2026-11-05 | 35 |  |
| 37 |  | Validation de la phase 4 | 0d | 2026-11-06 | 2026-11-06 | 36 |  |
| 38 | 5 | **Finalisation du dossier et préparation de la soutenance** | 5d | 2026-11-02 | 2026-11-06 |  |  |
| 39 |  | Consolider les preuves et la traçabilité des compétences | 2d | 2026-11-02 | 2026-11-03 | 35 |  |
| 40 |  | Finaliser l’auto-évaluation | 1d | 2026-11-04 | 2026-11-04 | 39 |  |
| 41 |  | Préparer le support de soutenance | 2d | 2026-11-04 | 2026-11-05 | 39 |  |
| 42 |  | Répéter la soutenance et contrôler le dépôt final | 1d | 2026-11-06 | 2026-11-06 | 40, 41 |  |
| 43 |  | Rendu final | 0d | 2026-11-07 | 2026-11-07 | 37, 42 |  |
| 44 | 6 | **Pilotage transversal** | 113d | 2026-07-27 | 2026-11-16 |  | 47% |
| 45 |  | Maintenir le journal de décisions | 113d | 2026-07-27 | 2026-11-16 |  | 60% |
| 46 |  | Mettre à jour le Gantt aux jalons | 113d | 2026-07-27 | 2026-11-16 |  | 55% |
| 47 |  | Maintenir l’auto-évaluation RNCP | 113d | 2026-07-27 | 2026-11-16 |  | 40% |
| 48 |  | Maintenir la traçabilité des compétences | 113d | 2026-07-27 | 2026-11-16 |  | 35% |

## Version 2 (saved 2026-09-05)

Note of the change: docs: update tracking after prioritized backlog

Last finish stays 2026-11-16. Complete tasks 14 → 15.

Changed:

| ID | Task | Start | Finish | Duration | Complete |
| --- | --- | --- | --- | --- | --- |
| 17 | Prioriser le backlog fonctionnel | 2026-09-10 → 2026-09-05 (-5d) | 2026-09-11 → 2026-09-05 (-6d) | 2d → 1d | 0% → 100% |

## Version 3 (saved 2026-09-05)

Note of the change: docs: update tracking after BPMN validation

Last finish stays 2026-11-16.

Changed:

| ID | Task | Start | Finish | Complete |
| --- | --- | --- | --- | --- |
| 18 | Formaliser BPMN et RACI | 2026-09-12 → 2026-09-05 (-7d) | 2026-09-13 → 2026-09-06 (-7d) | 0% → 50% |

## Version 4 (saved 2026-09-05)

Note of the change: docs: update tracking after RACI validation

Last finish stays 2026-11-16. Complete tasks 15 → 16.

Changed:

| ID | Task | Complete |
| --- | --- | --- |
| 18 | Formaliser BPMN et RACI | 50% → 100% |

## Version 5 (saved 2026-09-06)

Note of the change: docs: consolider cadrage tracabilite et pilotage phase 2

Last finish stays 2026-11-16. Complete tasks 16 → 17.

Changed:

| ID | Task | Start | Finish | Duration | Complete |
| --- | --- | --- | --- | --- | --- |
| 8 | **Phase 2 — Modèle cible et reprise des données** |  |  |  | 73% → 100% |
| 19 | Consolider RGPD, éco-conception et traçabilité | 2026-09-14 → 2026-09-06 (-8d) | 2026-09-16 → 2026-09-06 (-10d) | 3d → 1d | 0% → 100% |

## Version 6 (saved 2026-09-06)

Note of the change: docs: valider fin de phase 2 dans le Gantt

Last finish stays 2026-11-16. Complete tasks 17 → 18.

Changed:

| ID | Task | Start | Finish | Complete |
| --- | --- | --- | --- | --- |
| 20 | Validation de la phase 2 | 2026-09-17 → 2026-09-06 (-11d) | 2026-09-17 → 2026-09-06 (-11d) | 0% → 100% |

## Version 7 (saved 2026-09-09)

Note of the change: docs: update phase 3 gantt progress

Last finish stays 2026-11-16. Complete tasks 18 → 26.

Changed:

| ID | Task | Complete |
| --- | --- | --- |
| 21 | **Phase 3 — Architecture de croissance et décisionnel** | 0% → 100% |
| 22 | Analyser les volumes, la croissance et les contraintes 3V | 0% → 100% |
| 23 | Concevoir la séparation OLTP / OLAP | 0% → 100% |
| 24 | Étudier l’architecture PostgreSQL distribuée / Citus | 0% → 100% |
| 25 | Prototyper Citus avec k3d | 0% → 100% |
| 26 | Définir indexation, partitionnement et stratégie de performance | 0% → 100% |
| 27 | Formaliser PCA, PRA et stratégie de migration | 0% → 100% |
| 28 | Concevoir le modèle décisionnel et les indicateurs | 0% → 100% |
| 29 | Validation de la phase 3 | 0% → 100% |

## Version 8 (saved 2026-09-12)

Note of the change: docs: update project gantt progress

Last finish 2026-11-16 → 2026-12-31 (+45d). Complete tasks 26 → 33.

Changed:

| ID | Task | Start | Finish | Duration | Complete |
| --- | --- | --- | --- | --- | --- |
| 21 | **Phase 3 — Architecture de croissance et décisionnel** | 2026-09-17 → 2026-09-07 (-10d) | 2026-10-09 → 2026-09-08 (-31d) | 23d → 2d |  |
| 22 | Analyser les volumes, la croissance et les contraintes 3V | 2026-09-17 → 2026-09-07 (-10d) | 2026-09-20 → 2026-09-07 (-13d) | 4d → 1d |  |
| 23 | Concevoir la séparation OLTP / OLAP | 2026-09-21 → 2026-09-07 (-14d) | 2026-09-25 → 2026-09-07 (-18d) | 5d → 1d |  |
| 24 | Étudier l’architecture PostgreSQL distribuée / Citus | 2026-09-21 → 2026-09-07 (-14d) | 2026-09-25 → 2026-09-07 (-18d) | 5d → 1d |  |
| 25 | Prototyper Citus avec k3d | 2026-09-26 → 2026-09-08 (-18d) | 2026-09-30 → 2026-09-08 (-22d) | 5d → 1d |  |
| 26 | Définir indexation, partitionnement et stratégie de performance | 2026-10-01 → 2026-09-07 (-24d) | 2026-10-04 → 2026-09-07 (-27d) | 4d → 1d |  |
| 27 | Formaliser PCA, PRA et stratégie de migration | 2026-10-05 → 2026-09-09 (-26d) | 2026-10-09 → 2026-09-09 (-30d) | 5d → 1d |  |
| 28 | Concevoir le modèle décisionnel et les indicateurs | 2026-09-26 → 2026-09-07 (-19d) | 2026-09-30 → 2026-09-07 (-23d) | 5d → 1d |  |
| 29 | Validation de la phase 3 | 2026-10-10 → 2026-09-09 (-31d) | 2026-10-10 → 2026-09-09 (-31d) |  |  |
| 30 | **Phase 4 — Backend, API et IA** | 2026-10-10 → 2026-09-12 (-28d) | 2026-11-05 → 2026-09-12 (-54d) | 27d → 1d | 0% → 100% |
| 31 | Concevoir l’architecture applicative du backend | 2026-10-10 → 2026-09-12 (-28d) | 2026-10-13 → 2026-09-12 (-31d) | 4d → 1d | 0% → 100% |
| 32 | Développer l’API et les accès aux données | 2026-10-14 → 2026-09-12 (-32d) | 2026-10-21 → 2026-09-12 (-39d) | 8d → 1d | 0% → 100% |
| 33 | Implémenter les règles métier et contrôles d’accès | 2026-10-22 → 2026-09-12 (-40d) | 2026-10-26 → 2026-09-12 (-44d) | 5d → 1d | 0% → 100% |
| 34 | Préparer le pipeline de matching et les traitements IA | 2026-10-22 → 2026-09-12 (-40d) | 2026-10-27 → 2026-09-12 (-45d) | 6d → 1d | 0% → 100% |
| 35 | Réaliser les tests fonctionnels, techniques et sécurité | 2026-10-28 → 2026-09-12 (-46d) | 2026-11-01 → 2026-09-12 (-50d) | 5d → 1d | 0% → 100% |
| 36 | Documenter API, accessibilité et exploitation | 2026-11-02 → 2026-09-12 (-51d) | 2026-11-05 → 2026-09-12 (-54d) | 4d → 1d | 0% → 100% |
| 37 | Validation de la phase 4 | 2026-11-06 → 2026-09-12 (-55d) | 2026-11-06 → 2026-09-12 (-55d) |  | 0% → 100% |
| 38 | **Finalisation du dossier et préparation de la soutenance** | 2026-11-02 → 2026-09-12 (-51d) | 2026-11-06 → 2026-12-30 (+54d) | 5d → 110d | 0% → 50% |
| 39 | Consolider les preuves et la traçabilité des compétences | 2026-11-02 → 2026-09-12 (-51d) | 2026-11-03 → 2026-12-30 (+57d) | 2d → 110d | 0% → 90% |
| 40 | Finaliser l’auto-évaluation | 2026-11-04 → 2026-09-12 (-53d) | 2026-11-04 → 2026-12-30 (+56d) | 1d → 110d | 0% → 90% |
| 41 | Préparer le support de soutenance | 2026-11-04 → 2026-12-14 (+40d) | 2026-11-05 → 2026-12-23 (+48d) | 2d → 10d |  |
| 42 | Répéter la soutenance et contrôler le dépôt final | 2026-11-06 → 2026-12-28 (+52d) | 2026-11-06 → 2026-12-30 (+54d) | 1d → 3d |  |
| 43 | Rendu final | 2026-11-07 → 2026-12-31 (+54d) | 2026-11-07 → 2026-12-31 (+54d) |  |  |
